# Centinela

How a schedule from MS Project XML changed from version to version. A marks actual dates.

## Version 1 (saved 2026-10-14)

Note of the change: validando agente project libre

| ID | WBS | Task | Duration | Start | Finish | Predecessors |
| --- | --- | --- | --- | --- | --- | --- |
| 1 | 1 | **Gestión y Ceremonias** | 13.59d? | 2026-10-14 08:00 | 2026-11-02 13:45 |  |
| 2 |  | MGT. Tareas de inicio de proyecto | 0.5d? | 2026-10-14 08:00 | 2026-10-14 13:00 |  |
| 3 |  | MGT IT-001. Sprint planning | 0.5d? | 2026-10-14 08:00 | 2026-10-14 13:00 |  |
| 4 |  | MGT IT-001. Sprint review | 0.25d? | 2026-10-15 13:15 | 2026-10-15 15:15 | 26 |
| 5 |  | MGT IT-001. Sprint retrospective | 0.25d? | 2026-10-15 15:15 | 2026-10-16 08:15 | 4 |
| 6 |  | MGT IT-002. Sprint planning | 0.5d? | 2026-10-16 08:15 | 2026-10-16 13:15 | 5 |
| 7 |  | MGT IT-002. Sprint review | 0.25d? | 2026-10-20 08:15 | 2026-10-20 10:15 | 31 |
| 8 |  | MGT IT-002. Sprint retrospective | 0.25d? | 2026-10-20 10:15 | 2026-10-20 13:15 | 7 |
| 9 |  | MGT IT-003. Sprint planning | 0.5d? | 2026-10-20 13:15 | 2026-10-21 08:15 | 8 |
| 10 |  | MGT IT-003. Sprint review | 0.25d? | 2026-10-22 13:15 | 2026-10-22 15:15 | 33 |
| 11 |  | MGT IT-003. Sprint retrospective | 0.25d? | 2026-10-22 15:15 | 2026-10-23 08:15 | 10 |
| 12 |  | MGT IT-004. Sprint planning | 0.5d? | 2026-10-23 08:15 | 2026-10-23 13:15 | 11 |
| 13 |  | MGT IT-004. Sprint review | 0.25d? | 2026-10-27 08:15 | 2026-10-27 10:15 | 35 |
| 14 |  | MGT IT-004. Sprint retrospective | 0.25d? | 2026-10-27 10:15 | 2026-10-27 13:15 | 13 |
| 15 |  | MGT IT-005. Sprint planning | 0.5d? | 2026-10-27 13:15 | 2026-10-28 08:15 | 14 |
| 16 |  | MGT IT-005. Sprint review | 0.25d? | 2026-10-29 13:15 | 2026-10-29 15:15 | 38 |
| 17 |  | MGT IT-005. Sprint retrospective | 0.25d? | 2026-10-29 15:15 | 2026-10-30 08:15 | 16 |
| 18 |  | MGT IT-006. Sprint planning | 0.5d? | 2026-10-30 08:15 | 2026-10-30 13:15 | 17 |
| 19 |  | MGT IT-006. Sprint review | 0.25d? | 2026-11-02 08:45 | 2026-11-02 10:45 | 28 |
| 20 |  | MGT IT-006. Sprint retrospective | 0.25d? | 2026-11-02 10:45 | 2026-11-02 13:45 | 19 |
| 21 | 2 | **EP-001. Consulta de inventario** | 10.28d? | 2026-10-14 13:00 | 2026-10-28 15:15 |  |
| 22 |  | US-011. Filtrar el catálogo por categoría | 0.38d? | 2026-10-28 08:15 | 2026-10-28 11:15 | 15 |
| 23 |  | US-012. Ordenar las piezas por cantidad de stock | 0.38d? | 2026-10-28 11:15 | 2026-10-28 15:15 | 22 |
| 24 |  | US-001. Buscar piezas por nombre o código | 0.56d? | 2026-10-14 13:00 | 2026-10-15 08:30 | 3 |
| 25 | 3 | **EP-002. Solicitud de repuestos** | 12.03d? | 2026-10-15 08:30 | 2026-11-02 08:45 |  |
| 26 |  | US-002. Solicitar una pieza | 0.47d? | 2026-10-15 08:30 | 2026-10-15 13:15 | 24 |
| 27 |  | US-009. Cancelar una solicitud propia | 0.56d? | 2026-10-26 08:45 | 2026-10-26 14:15 | 34 |
| 28 |  | US-014. Duplicar una solicitud anterior para precargar | 0.56d? | 2026-10-30 13:15 | 2026-11-02 08:45 | 18 |
| 29 | 4 | **EP-003. Gestión de solicitudes en almacén** | 5.94d? | 2026-10-19 08:45 | 2026-10-27 08:15 |  |
| 30 |  | US-004. Consultar el listado de solicitudes pendientes | 0.56d? | 2026-10-19 08:45 | 2026-10-19 14:15 | 37 |
| 31 |  | US-005. Aceptar o rechazar una solicitud | 0.38d? | 2026-10-19 14:15 | 2026-10-20 08:15 | 30 |
| 32 |  | US-006. Marcar una solicitud como entregada y descontar stock | 0.56d? | 2026-10-21 08:15 | 2026-10-21 13:45 | 9 |
| 33 |  | US-007. Dar de alta una pieza ficticia en el inventario | 0.94d? | 2026-10-21 13:45 | 2026-10-22 13:15 | 32 |
| 34 |  | US-008. Ajustar manualmente las existencias de una pieza | 0.56d? | 2026-10-23 13:15 | 2026-10-26 08:45 | 12 |
| 35 |  | US-010. Añadir un motivo obligatorio al rechazar una solicitud | 0.38d? | 2026-10-26 14:15 | 2026-10-27 08:15 | 27 |
| 36 | 5 | **EP-004. Seguimiento y trazabilidad** | 9d? | 2026-10-16 13:15 | 2026-10-29 13:15 |  |
| 37 |  | US-003. Consultar el estado de las propias solicitudes | 0.56d? | 2026-10-16 13:15 | 2026-10-19 08:45 | 6 |
| 38 |  | US-013. Consultar el histórico de movimientos | 0.75d? | 2026-10-28 15:15 | 2026-10-29 13:15 | 23 |

## Version 2 (saved 2026-10-14)

Note of the change: actualizando agente project libre y revisando Planificación_Epicas

Last finish 2026-11-02 → 2026-11-20 (+18d).

Changed:

| ID | Task | Start | Finish | Duration | Predecessors |
| --- | --- | --- | --- | --- | --- |
| 1 | **Gestión y Ceremonias** |  | 2026-11-02 13:45 → 2026-11-20 08:30 (+18d) | 13.59d? → 27.06d? |  |
| 3 | MGT IT-001. Sprint planning | 2026-10-14 08:00 → 2026-10-14 13:00 | 2026-10-14 13:00 → 2026-10-14 17:00 |  | none → 2 |
| 4 | MGT IT-001. Sprint review | 2026-10-15 13:15 → 2026-10-16 08:15 (+1d) | 2026-10-15 15:15 → 2026-10-16 10:15 (+1d) |  |  |
| 5 | MGT IT-001. Sprint retrospective | 2026-10-15 15:15 → 2026-10-16 10:15 (+1d) | 2026-10-16 08:15 → 2026-10-16 13:15 |  |  |
| 6 | MGT IT-002. Sprint planning | 2026-10-16 08:15 → 2026-10-21 13:00 (+5d) | 2026-10-16 13:15 → 2026-10-21 17:00 (+5d) |  | 5 → 3SS+5d |
| 7 | MGT IT-002. Sprint review | 2026-10-20 08:15 → 2026-10-23 13:00 (+3d) | 2026-10-20 10:15 → 2026-10-23 15:00 (+3d) |  |  |
| 8 | MGT IT-002. Sprint retrospective | 2026-10-20 10:15 → 2026-10-23 15:00 (+3d) | 2026-10-20 13:15 → 2026-10-23 17:00 (+3d) |  |  |
| 9 | MGT IT-003. Sprint planning | 2026-10-20 13:15 → 2026-10-28 13:00 (+8d) | 2026-10-21 08:15 → 2026-10-28 17:00 (+7d) |  | 8 → 6SS+5d |
| 10 | MGT IT-003. Sprint review | 2026-10-22 13:15 → 2026-10-30 13:00 (+8d) | 2026-10-22 15:15 → 2026-10-30 15:00 (+8d) |  |  |
| 11 | MGT IT-003. Sprint retrospective | 2026-10-22 15:15 → 2026-10-30 15:00 (+8d) | 2026-10-23 08:15 → 2026-10-30 17:00 (+7d) |  |  |
| 12 | MGT IT-004. Sprint planning | 2026-10-23 08:15 → 2026-11-04 13:00 (+12d) | 2026-10-23 13:15 → 2026-11-04 17:00 (+12d) |  | 11 → 9SS+5d |
| 13 | MGT IT-004. Sprint review | 2026-10-27 08:15 → 2026-11-06 13:00 (+10d) | 2026-10-27 10:15 → 2026-11-06 15:00 (+10d) |  |  |
| 14 | MGT IT-004. Sprint retrospective | 2026-10-27 10:15 → 2026-11-06 15:00 (+10d) | 2026-10-27 13:15 → 2026-11-06 17:00 (+10d) |  |  |
| 15 | MGT IT-005. Sprint planning | 2026-10-27 13:15 → 2026-11-11 13:00 (+15d) | 2026-10-28 08:15 → 2026-11-11 17:00 (+14d) |  | 14 → 12SS+5d |
| 16 | MGT IT-005. Sprint review | 2026-10-29 13:15 → 2026-11-13 13:00 (+15d) | 2026-10-29 15:15 → 2026-11-13 15:00 (+15d) |  |  |
| 17 | MGT IT-005. Sprint retrospective | 2026-10-29 15:15 → 2026-11-13 15:00 (+15d) | 2026-10-30 08:15 → 2026-11-13 17:00 (+14d) |  |  |
| 18 | MGT IT-006. Sprint planning | 2026-10-30 08:15 → 2026-11-18 13:00 (+19d) | 2026-10-30 13:15 → 2026-11-18 17:00 (+19d) |  | 17 → 15SS+5d |
| 19 | MGT IT-006. Sprint review | 2026-11-02 08:45 → 2026-11-19 13:30 (+17d) | 2026-11-02 10:45 → 2026-11-19 15:30 (+17d) |  |  |
| 20 | MGT IT-006. Sprint retrospective | 2026-11-02 10:45 → 2026-11-19 15:30 (+17d) | 2026-11-02 13:45 → 2026-11-20 08:30 (+18d) |  |  |
| 21 | **EP-001. Consulta de inventario** | 2026-10-14 13:00 → 2026-10-15 08:00 (+1d) | 2026-10-28 15:15 → 2026-11-12 15:00 (+15d) | 10.28d? → 20.75d? |  |
| 22 | US-011. Filtrar el catálogo por categoría | 2026-10-28 08:15 → 2026-11-12 08:00 (+15d) | 2026-10-28 11:15 → 2026-11-12 11:00 (+15d) |  |  |
| 23 | US-012. Ordenar las piezas por cantidad de stock | 2026-10-28 11:15 → 2026-11-12 11:00 (+15d) | 2026-10-28 15:15 → 2026-11-12 15:00 (+15d) |  |  |
| 24 | US-001. Buscar piezas por nombre o código | 2026-10-14 13:00 → 2026-10-15 08:00 (+1d) | 2026-10-15 08:30 → 2026-10-15 13:30 |  |  |
| 25 | **EP-002. Solicitud de repuestos** | 2026-10-15 08:30 → 2026-10-15 13:30 | 2026-11-02 08:45 → 2026-11-19 13:30 (+17d) | 12.03d? → 25d? |  |
| 26 | US-002. Solicitar una pieza | 2026-10-15 08:30 → 2026-10-15 13:30 | 2026-10-15 13:15 → 2026-10-16 08:15 (+1d) |  |  |
| 27 | US-009. Cancelar una solicitud propia | 2026-10-26 08:45 → 2026-11-05 13:30 (+10d) | 2026-10-26 14:15 → 2026-11-06 09:00 (+11d) |  |  |
| 28 | US-014. Duplicar una solicitud anterior para precargar | 2026-10-30 13:15 → 2026-11-19 08:00 (+20d) | 2026-11-02 08:45 → 2026-11-19 13:30 (+17d) |  |  |
| 29 | **EP-003. Gestión de solicitudes en almacén** | 2026-10-19 08:45 → 2026-10-22 13:30 (+3d) | 2026-10-27 08:15 → 2026-11-06 13:00 (+10d) | 5.94d? → 10.94d? |  |
| 30 | US-004. Consultar el listado de solicitudes pendientes | 2026-10-19 08:45 → 2026-10-22 13:30 (+3d) | 2026-10-19 14:15 → 2026-10-23 09:00 (+4d) |  |  |
| 31 | US-005. Aceptar o rechazar una solicitud | 2026-10-19 14:15 → 2026-10-23 09:00 (+4d) | 2026-10-20 08:15 → 2026-10-23 13:00 (+3d) |  |  |
| 32 | US-006. Marcar una solicitud como entregada y descontar stock | 2026-10-21 08:15 → 2026-10-29 08:00 (+8d) | 2026-10-21 13:45 → 2026-10-29 13:30 (+8d) |  |  |
| 33 | US-007. Dar de alta una pieza ficticia en el inventario | 2026-10-21 13:45 → 2026-10-29 13:30 (+8d) | 2026-10-22 13:15 → 2026-10-30 13:00 (+8d) |  |  |
| 34 | US-008. Ajustar manualmente las existencias de una pieza | 2026-10-23 13:15 → 2026-11-05 08:00 (+13d) | 2026-10-26 08:45 → 2026-11-05 13:30 (+10d) |  |  |
| 35 | US-010. Añadir un motivo obligatorio al rechazar una solicitud | 2026-10-26 14:15 → 2026-11-06 09:00 (+11d) | 2026-10-27 08:15 → 2026-11-06 13:00 (+10d) |  |  |
| 36 | **EP-004. Seguimiento y trazabilidad** | 2026-10-16 13:15 → 2026-10-22 08:00 (+6d) | 2026-10-29 13:15 → 2026-11-13 13:00 (+15d) | 9d? → 16.5d? |  |
| 37 | US-003. Consultar el estado de las propias solicitudes | 2026-10-16 13:15 → 2026-10-22 08:00 (+6d) | 2026-10-19 08:45 → 2026-10-22 13:30 (+3d) |  |  |
| 38 | US-013. Consultar el histórico de movimientos | 2026-10-28 15:15 → 2026-11-12 15:00 (+15d) | 2026-10-29 13:15 → 2026-11-13 13:00 (+15d) |  |  |
